# 2U NO.IT知道网项目计划

Schedule from MS Project, 2011-08-20 to 2011-09-29, scheduled back from the finish, A marks actual dates.

## Calendars

- 标准: Mon-Fri 08:00-12:00, 13:00-17:00; Sat-Sun off.

## Resources

| Resource | Group |
| --- | --- |
| 张煜 | 产品部 |
| 曹岑 | 产品部 |
| 蔡俊斌 | 技术部 |
| 王吟泽 | 项目经理 |
| 伍和伟 | 技术部 |
| 范博阳 | 技术部 |
| 戴维扬 | 技术部 |
| 朱爽 | 技术部 |
| 陈新 | 测试部 |
| 方华宾 | 测试部 |
| 朱悦超 | 测试部 |

## Schedule

| ID | Task | Type | Duration | Start | Finish | Predecessors | Complete | Remaining | Actual finish | Constraint | Resources | Work | Actual work |
| --- | --- | --- | --- | --- | --- | --- | --- | --- | --- | --- | --- | --- | --- |
| 1 | 项目开始 | milestone | 0d | 2011-08-20 A | 2011-08-20 A |  | 100% |  |  | start no later than 2011-08-20 |  |  |  |
| 2 | 构思阶段开始 | milestone | 0d | 2011-08-20 A | 2011-08-20 A |  | 100% |  |  | start no later than 2011-08-20 |  |  |  |
| 3 | 用户需求列表 | manual | 1.88d | 2011-08-20 A | 2011-08-21 |  | 14% | 1.61d |  | as late as possible | 张煜; 曹岑 | 31h | 7h |
| 4 | 需求跟踪矩阵 | manual | 0.5d | 2011-08-21 A | 2011-08-21 A | 3 | 100% |  |  | as late as possible | 陈新; 张煜 | 8h | 8h |
| 5 | 前景范围文档编写 | manual | 0.38d | 2011-08-22 A | 2011-08-22 A | 3 | 100% |  |  | as late as possible | 王吟泽; 张煜 | 5h | 5h |
| 6 | 测试技术学习 | manual | 1d | 2011-08-21 A | 2011-08-21 A |  | 100% |  |  | as late as possible | 陈新; 方华宾; 朱悦超 | 30h | 30h |
| 7 | 构思阶段结束 | milestone, manual | 0d | 2011-08-22 A | 2011-08-22 A | 3, 5, 4 | 100% |  |  | as late as possible |  |  |  |
| 8 | 计划阶段开始 | milestone, manual | 0d | 2011-08-24 A | 2011-08-24 | 7 | 99% | 0d |  | finish no later than 2011-08-24 |  |  |  |
| 9 | 用例图制作 | manual | 0.75d | 2011-08-23 A | 2011-08-24 |  | 100% |  | 2011-08-23 | as late as possible | 曹岑; 张煜 | 12h | 12h |
| 10 | 用例场景描述 | manual | 1d | 2011-08-25 A | 2011-08-25 A | 7 | 100% |  |  | as late as possible | 曹岑; 张煜 | 16h | 16h |
| 11 | 活动图制作 | manual | 2d | 2011-08-24 A | 2011-08-25 A | 7 | 100% |  |  | finish no later than 2011-08-25 | 方华宾; 朱爽; 朱悦超 | 36h | 36h |
| 12 | 类图制作 | manual | 2d | 2011-08-26 A | 2011-08-27 A | 11 | 100% |  |  | as late as possible | 蔡俊斌; 戴维扬; 王吟泽; 伍和伟; 朱爽 | 42h | 42h |
| 13 | 界面原型 | manual | 2d | 2011-08-26 A | 2011-08-27 A | 7 | 100% |  |  | as late as possible | 曹岑; 范博阳; 张煜 | 40h | 40h |
| 14 | 架构设计 | manual | 1d | 2011-08-25 A | 2011-08-25 A | 12 | 100% |  |  | as late as possible | 蔡俊斌; 王吟泽 | 4h | 4h |
| 15 | 测试计划 | manual | 1d | 2011-08-26 A | 2011-08-26 A | 8 | 100% |  |  | as late as possible | 陈新; 方华宾; 朱悦超 | 24h | 24h |
| 16 | 数据库设计 | manual | 0.5d | 2011-08-26 | 2011-08-27 | 14 |  |  |  | as late as possible | 蔡俊斌; 戴维扬; 伍和伟; 王吟泽 | 28h |  |
| 17 | 开发和代码规范编写 | manual | 1d | 2011-08-24 A | 2011-08-24 A | 14 | 100% |  |  | as late as possible | 蔡俊斌 | 5h | 5h |
| 18 | 设计阶段结束 | milestone, manual | 0d | 2011-08-27 | 2011-08-27 | 10, 11, 12, 14, 15, 16, 17 |  |  |  | as late as possible |  |  |  |
| 19 | 实现阶段开始 | milestone, manual | 0d | 2011-08-28 | 2011-08-28 | 18 |  |  |  | as late as possible |  |  |  |
| 20 | 编码实现 | manual | 3d | 2011-08-28 | 2011-08-30 | 19 |  |  |  | as late as possible | 蔡俊斌; 戴维扬; 范博阳; 伍和伟; 朱爽 | 140h |  |
| 21 | 功能性测试用例 | manual | 2d | 2011-08-28 | 2011-08-29 | 19 |  |  |  | as late as possible | 陈新 | 16h |  |
| 22 | 界面测试检查单 | manual | 2d | 2011-08-28 | 2011-08-29 | 19 |  |  |  | as late as possible | 方华宾 | 10h |  |
| 23 | 安全性测试用例 | manual | 1d | 2011-08-30 | 2011-08-30 | 19 |  |  |  | as late as possible | 朱悦超 | 5h |  |
| 24 | 兼容性测试用例 | manual | 1d | 2011-08-30 | 2011-08-30 | 19 |  |  |  | as late as possible | 朱悦超 | 5h |  |
| 25 | 实现阶段结束 | milestone, manual | 0d | 2011-09-01 | 2011-09-01 | 20, 21, 23, 24, 22 |  |  |  | as late as possible |  |  |  |
| 26 | 稳定阶段开始 | milestone, manual | 0d | 2011-09-01 | 2011-09-01 | 25 |  |  |  | as late as possible |  |  |  |
| 27 | 功能性测试 | manual | 0.25d | 2011-09-01 | 2011-09-01 | 26 |  |  |  | as late as possible | 陈新; 方华宾; 朱悦超 | 6h |  |
| 28 | 界面测试 | manual | 0.5d | 2011-09-01 | 2011-09-01 | 26 |  |  |  | as late as possible | 方华宾 | 4h |  |
| 29 | 兼容性测试 | manual | 0.5d | 2011-09-02 | 2011-09-02 |  |  |  |  | as late as possible | 朱悦超 | 4h |  |
| 30 | 安全性测试 | manual | 0.25d | 2011-09-02 | 2011-09-02 | 29 |  |  |  | as late as possible | 朱悦超; 方华宾 | 4h |  |
| 31 | 测试总结报告 | manual | 0.38d | 2011-09-02 | 2011-09-02 | 27, 28, 29, 30 |  |  |  | as late as possible | 陈新; 方华宾; 朱悦超 | 6h |  |
| 32 | 测试阶段结束 | milestone, manual | 0d | 2011-09-02 | 2011-09-02 |  |  |  |  | as late as possible |  |  |  |
| 33 | 部署阶段 | manual | 0.5d | 2011-09-02 | 2011-09-02 |  |  |  |  | as late as possible | 戴维扬 | 4h |  |
| 34 | 第一版本结束 | milestone, manual | 0d | 2011-09-02 | 2011-09-02 | 33 |  |  |  | as late as possible |  |  |  |
| 35 | 第二版本开始 | milestone, manual | 0d | 2011-09-28 | 2011-09-28 | 34 |  |  |  | as late as possible |  |  |  |
| 36 | 构思阶段 | manual | 2d | 2011-09-28 | 2011-09-29 |  |  |  |  | as late as possible |  |  |  |
| 37 | 计划阶段 | manual | 3d | 2011-08-30 | 2011-09-01 |  |  |  |  | as late as possible |  |  |  |
| 38 | 实现 | manual | 2d | 2011-09-03 | 2011-09-05 |  |  |  |  | as late as possible |  |  |  |
| 39 | 测试部署 | manual | 4d | 2011-09-02 | 2011-09-07 |  |  |  |  | as late as possible |  |  |  |
| 40 | 第二版本完成 | manual | 1d | 2011-09-07 | 2011-09-07 |  |  |  |  | as late as possible |  |  |  |
